# Paystub Project Schedule

Schedule from MS Project, 2024-01-24 to 2024-05-06, A marks actual dates.

## Calendars

- Standard: Mon-Fri 08:00-12:00, 13:00-17:00; Sat-Sun off.
- 24 Hours: Mon-Sun 00:00-24:00.

## Resources

| Resource |
| --- |
| Jimmy P |
| Daniel G |
| Ethan R |
| Michael |
| Michael B |
| Daniel |
| Jimmy |
| Ethan |
| All |

## Schedule

| ID | WBS | Task | Type | Duration | Start | Finish | Predecessors | Complete | Remaining | Total slack | Free slack | Constraint | Calendar | Resources | Work | Actual work |
| --- | --- | --- | --- | --- | --- | --- | --- | --- | --- | --- | --- | --- | --- | --- | --- | --- |
| 1 | 1 | **<Project Setup>** |  | 6d | 2024-01-24 A | 2024-01-31 A |  | 100% |  |  |  |  |  |  | 32h | 32h |
| 2 | 1.1 | Create Google Drive |  | 1d | 2024-01-24 A | 2024-01-31 A |  | 100% |  |  |  | finish no earlier than 2024-01-31 |  | Michael | 8h | 8h |
| 3 | 1.2 | Create GitHub |  | 1d | 2024-01-24 A | 2024-01-31 A |  | 100% |  |  |  | finish no earlier than 2024-01-31 |  | Michael | 8h | 8h |
| 4 | 1.3 | Join Slack Group |  | 1d | 2024-01-24 A | 2024-01-31 A |  | 100% |  |  |  | finish no earlier than 2024-01-31 |  | All | 8h | 8h |
| 5 | 1.4 | Create Trello |  | 1d | 2024-01-24 A | 2024-01-31 A |  | 100% |  |  |  | finish no earlier than 2024-01-31 |  | Daniel | 8h | 8h |
| 6 | 2 | **<Project Proposal>** |  | 6d | 2024-01-24 A | 2024-02-01 A |  | 100% |  |  |  |  |  |  | 40h | 40h |
| 7 | 2.1 | Create Project Proposal |  | 4d | 2024-01-24 A | 2024-01-29 A |  | 100% |  |  |  |  | 24 Hours | All | 32h | 32h |
| 8 | 2.2 | Present Proposal |  | 1d | 2024-01-29 A | 2024-01-29 A | 7 | 100% |  |  |  |  |  | All | 8h | 8h |
| 9 | 2.3 | Proposal Accepted | milestone | 0d | 2024-02-01 A | 2024-02-01 A | 8 | 100% |  |  |  | start no earlier than 2024-02-01 |  |  |  |  |
| 10 | 3 | **<Project Plan>** |  | 18d | 2024-02-01 A | 2024-02-26 |  | 95% | 0.83d | 4d |  |  |  |  | 872h | 832h |
| 11 | 3.1 | Scope and purpose of document |  | 13d | 2024-02-01 A | 2024-02-19 A | 9 | 100% |  |  |  | start no earlier than 2024-02-01 |  | Jimmy | 104h | 104h |
| 12 | 3.2 | Problem/Opportunity Description |  | 13d | 2024-02-01 A | 2024-02-19 A | 9 | 100% |  |  |  | start no earlier than 2024-02-01 |  | Jimmy | 104h | 104h |
| 13 | 3.3 | Anticipated Business/Personal Benefits |  | 13d | 2024-02-01 A | 2024-02-19 A | 9 | 100% |  |  |  | start no earlier than 2024-02-01 |  | Daniel | 104h | 104h |
| 14 | 3.4 | System Capabilities |  | 13d | 2024-02-01 A | 2024-02-19 A | 9 | 100% |  |  |  | start no earlier than 2024-02-01 |  | Daniel | 104h | 104h |
| 15 | 3.5 | System Context |  | 13d | 2024-02-01 A | 2024-02-19 A | 9 | 100% |  |  |  | start no earlier than 2024-02-01 |  | Ethan | 104h | 104h |
| 16 | 3.6 | Schedule |  | 13d | 2024-02-01 A | 2024-02-19 A | 9 | 100% |  |  |  | start no earlier than 2024-02-01 |  | Ethan | 104h | 104h |
| 17 | 3.7 | Staff Organization |  | 13d | 2024-02-01 A | 2024-02-19 A | 9 | 100% |  |  |  | start no earlier than 2024-02-01 |  | Michael | 104h | 104h |
| 18 | 3.8 | Tracking and control mechanisms |  | 13d | 2024-02-01 A | 2024-02-19 A | 9 | 100% |  |  |  | start no earlier than 2024-02-01 |  | Michael | 104h | 104h |
| 19 | 3.9 | Update Review Plan |  | 5d | 2024-02-20 | 2024-02-26 | 11, 12, 13, 14, 15, 16, 17, 18 |  |  | 4d | 0d | start no earlier than 2024-02-20 |  | All | 40h |  |
| 20 | 4 | **<User Interface Mockups>** |  | 7d | 2024-02-27 | 2024-03-06 |  |  |  | 42d |  |  |  |  |  |  |
| 21 | 4.1 | User Interface Mockups |  | 7d | 2024-02-27 | 2024-03-06 | 19 |  |  | 42d |  |  |  |  |  |  |
| 22 | 5 | **<Individual Interviews>** |  | 15d | 2024-02-27 | 2024-03-18 |  |  |  | 34d |  |  |  |  |  |  |
| 23 | 5.1 | Interview Questions |  | 5d | 2024-02-27 | 2024-03-04 | 19 |  |  | 34d | 0d |  |  |  |  |  |
| 24 | 5.2 | Interviews |  | 10d | 2024-03-05 | 2024-03-18 | 23 |  |  | 34d |  |  |  |  |  |  |

| ID | WBS | Task | Type | Duration | Start | Finish | Predecessors | Total slack | Free slack | Constraint |
| --- | --- | --- | --- | --- | --- | --- | --- | --- | --- | --- |
| 25 | 6 | **<System Requirements>** |  | 35d | 2024-02-26 | 2024-04-15 |  | 4d |  |  |
| 26 | 6.1 | Start System Requirements | milestone | 0d | 2024-02-26 | 2024-02-26 | 19 | 34d | 30d |  |
| 27 | 6.2 | Introduction |  | 30d | 2024-02-27 | 2024-04-08 | 19 | 4d | 0d | start no earlier than 2024-02-27 |
| 28 | 6.3 | Description Model |  | 30d | 2024-02-27 | 2024-04-08 | 19 | 4d | 0d |  |
| 29 | 6.4 | Class Diagram |  | 30d | 2024-02-27 | 2024-04-08 | 19 | 4d | 0d |  |
| 30 | 6.5 | System Sequence Chart |  | 30d | 2024-02-27 | 2024-04-08 | 19 | 4d | 0d |  |
| 31 | 6.6 | Use Case Diagram |  | 30d | 2024-02-27 | 2024-04-08 | 19 | 4d | 0d |  |
| 32 | 6.7 | Use Case Descriptions |  | 30d | 2024-02-27 | 2024-04-08 | 19 | 19d |  | start no earlier than 2024-02-27 |
| 33 | 6.8 | Update System Requirements |  | 5d | 2024-04-09 | 2024-04-15 | 26, 27, 28, 29, 30, 31 | 4d | 0d |  |
| 34 | 7 | **<System Design>** |  | 10d | 2024-04-15 | 2024-04-29 |  | 4d |  |  |
| 35 | 7.1 | Start System Design | milestone | 0d | 2024-04-15 | 2024-04-15 | 33 | 14d |  |  |
| 36 | 7.2 | Introduction |  | 10d | 2024-04-16 | 2024-04-29 | 33 | 4d |  |  |
| 37 | 7.3 | Class Diagram |  | 10d | 2024-04-16 | 2024-04-29 | 33 | 4d |  |  |
| 38 | 7.4 | First Cut Sequence Diagrams |  | 10d | 2024-04-16 | 2024-04-29 | 33 | 4d |  |  |
| 39 | 7.5 | State Charts |  | 10d | 2024-04-16 | 2024-04-29 | 33 | 4d |  |  |
| 40 | 8 | Final Project Due | milestone | 0d | 2024-05-06 | 2024-05-06 | 34 | 0d |  | start no earlier than 2024-05-06 |
